# ECS OOTB AI Realization — 18 Week Engagement ISPP

Schedule from MS Project XML, 2026-06-02 to 2026-10-05.
Everforth ECS

## Calendars

- Standard: Mon-Fri 08:00-12:00, 13:00-17:00; Sat-Sun off.

## Resources

| Resource |
| --- |
| ECS Delivery Manager |
| ECS Lead Consultant (ITSM) |
| ECS Platform Architect |
| ECS Catalog Specialist |
| ECS CMDB/Discovery Specialist |
| ECS Employee Experience Consultant |
| ECS HAM Consultant |
| Customer Sponsor / Executive |
| Customer ITSM Process Owner |
| Customer IT Infrastructure Lead |
| Customer Service Desk Manager |
| Customer Change Manager |
| Customer HR/Employee Experience |

## Schedule

| ID | Task | Type | Duration | Start | Finish | Predecessors | Resources | Work |
| --- | --- | --- | --- | --- | --- | --- | --- | --- |
| 1 | **SPRINT 0 — Pre-Engagement & Setup** |  | 10d | 2026-06-02 | 2026-06-15 |  |  | 80h |
| 2 | Project Kickoff Meeting |  | 1d | 2026-06-02 | 2026-06-02 |  | ECS Delivery Manager; Customer Sponsor / Executive | 8h |
| 3 | Governance & RACI Finalization |  | 2d | 2026-06-02 | 2026-06-03 | 2 | ECS Delivery Manager; Customer Sponsor / Executive | 16h |
| 4 | ServiceNow Environment Provisioning |  | 3d | 2026-06-02 | 2026-06-04 | 2 | ECS Platform Architect; Customer IT Infrastructure Lead | 24h |
| 5 | Foundation Data Pack Delivery to Customer |  | 2d | 2026-06-05 | 2026-06-08 | 4 | ECS Lead Consultant (ITSM); ECS Platform Architect | 16h |
| 6 | ⚑ CUST: Provision Foundation Data (Users/Depts/Groups) |  | 3d | 2026-06-05 | 2026-06-09 | 5 | Customer ITSM Process Owner; Customer IT Infrastructure Lead | 24h |
| 7 | Integration Connectivity — AD/SSO Setup |  | 3d | 2026-06-09 | 2026-06-11 | 4 | ECS Platform Architect; Customer IT Infrastructure Lead | 24h |
| 8 | Accelerator Pack Handover Session |  | 1d | 2026-06-12 | 2026-06-12 | 5, 6 | ECS Delivery Manager; ECS Lead Consultant (ITSM) | 8h |
| 9 | Sprint 0 Complete ✓ | milestone | 0d | 2026-06-15 | 2026-06-15 | 6, 7, 8 |  |  |
| 10 | **SPRINT 1 — Platform Foundation & Discovery** |  | 10d | 2026-06-16 | 2026-06-29 |  |  | 80h |
| 11 | Sprint 1 Planning |  | 1d | 2026-06-16 | 2026-06-16 | 9 | ECS Delivery Manager; ECS Lead Consultant (ITSM); ECS Platform Architect | 8h |
| 12 | Platform Architecture Stand-up |  | 5d | 2026-06-16 | 2026-06-22 | 11 | ECS Platform Architect | 40h |
| 13 | CSDM Definition Workshop |  | 2d | 2026-06-16 | 2026-06-17 | 11 | ECS Lead Consultant (ITSM); ECS Platform Architect; Customer ITSM Process Owner | 16h |
| 14 | ⚑ CUST: CSDM Service Taxonomy Input |  | 3d | 2026-06-16 | 2026-06-18 | 13 | Customer ITSM Process Owner; Customer IT Infrastructure Lead | 24h |
| 15 | ITSM Design Workshop — Incident & Problem |  | 3d | 2026-06-18 | 2026-06-22 | 13 | ECS Lead Consultant (ITSM); Customer ITSM Process Owner; Customer Service Desk Manager | 24h |
| 16 | ITSM Design Workshop — Request & Catalog |  | 3d | 2026-06-18 | 2026-06-22 | 13 | ECS Lead Consultant (ITSM); ECS Catalog Specialist; Customer ITSM Process Owner | 24h |
| 17 | Category Structure Simplification Workshop |  | 2d | 2026-06-23 | 2026-06-24 | 16 | ECS Lead Consultant (ITSM); ECS Catalog Specialist; Customer ITSM Process Owner | 16h |
| 18 | ⚑ CUST: Confirm Incident/Problem Process Decisions |  | 2d | 2026-06-23 | 2026-06-24 | 15 | Customer ITSM Process Owner; Customer Service Desk Manager | 16h |
| 19 | Sprint 1 Demo & Review ✓ | milestone | 0d | 2026-06-29 | 2026-06-29 | 12, 14, 17, 18 |  |  |
| 20 | **SPRINT 2 — Discovery, CMDB & SGC** |  | 10d | 2026-06-30 | 2026-07-13 |  |  | 80h |
| 21 | Sprint 2 Planning |  | 1d | 2026-06-30 | 2026-06-30 | 19 | ECS Delivery Manager; ECS Lead Consultant (ITSM); ECS Platform Architect | 8h |
| 22 | Discovery Initiation & MID Server Setup |  | 3d | 2026-06-30 | 2026-07-02 | 21 | ECS CMDB/Discovery Specialist; Customer IT Infrastructure Lead | 24h |
| 23 | ⚑ CUST: Provide SCCM/Intune Admin Access |  | 2d | 2026-06-30 | 2026-07-01 | 21 | Customer IT Infrastructure Lead | 16h |
| 24 | Service Graph Connector — SCCM Config |  | 3d | 2026-07-02 | 2026-07-06 | 22, 23 | ECS CMDB/Discovery Specialist | 24h |
| 25 | Service Graph Connector — Intune Config |  | 3d | 2026-07-02 | 2026-07-06 | 22, 23 | ECS CMDB/Discovery Specialist | 24h |
| 26 | CMDB Normalization — Class & IRE Baseline |  | 4d | 2026-07-07 | 2026-07-10 | 22 | ECS CMDB/Discovery Specialist; ECS Platform Architect | 32h |
| 27 | ⚑ CUST: CMDB Health Review & Sign-off |  | 2d | 2026-07-10 | 2026-07-13 | 26 | Customer IT Infrastructure Lead; Customer ITSM Process Owner | 16h |
| 28 | Discovery Schedules & Credential Config |  | 3d | 2026-07-03 | 2026-07-07 | 22 | ECS CMDB/Discovery Specialist | 24h |
| 29 | Sprint 2 Demo & Review ✓ | milestone | 0d | 2026-07-13 | 2026-07-13 | 24, 25, 26, 27, 28 |  |  |

Notes:
- 6: Customer dependency — data required before Sprint 1 builds
- 13: Workshop — requires customer ITSM Owner attendance
- 14: Customer provides service taxonomy, business service definitions
- 17: Align legacy category tree to OOTB/CSDM
- 23: Blocking — SGC cannot be configured without credentials

| ID | Task | Type | Duration | Start | Finish | Predecessors | Resources | Work |
| --- | --- | --- | --- | --- | --- | --- | --- | --- |
| 30 | **SPRINT 3 — ITSM Core Build** |  | 10d | 2026-07-14 | 2026-07-27 |  |  | 80h |
| 31 | Sprint 3 Planning |  | 1d | 2026-07-14 | 2026-07-14 | 29 | ECS Delivery Manager; ECS Lead Consultant (ITSM) | 8h |
| 32 | Incident Management Configuration |  | 4d | 2026-07-14 | 2026-07-17 | 31 | ECS Lead Consultant (ITSM); Customer ITSM Process Owner | 32h |
| 33 | Major Incident Management Configuration |  | 2d | 2026-07-14 | 2026-07-15 | 31 | ECS Lead Consultant (ITSM); Customer Service Desk Manager | 16h |
| 34 | Problem Management Configuration |  | 3d | 2026-07-15 | 2026-07-17 | 31 | ECS Lead Consultant (ITSM); Customer ITSM Process Owner | 24h |
| 35 | Request Management Configuration |  | 3d | 2026-07-16 | 2026-07-20 | 31 | ECS Lead Consultant (ITSM); ECS Catalog Specialist | 24h |
| 36 | SLA Baseline Configuration |  | 3d | 2026-07-21 | 2026-07-23 | 32, 34 | ECS Lead Consultant (ITSM); Customer ITSM Process Owner | 24h |
| 37 | Assignment Rules Configuration |  | 2d | 2026-07-21 | 2026-07-22 | 32 | ECS Lead Consultant (ITSM); Customer ITSM Process Owner | 16h |
| 38 | ⚑ CUST: Validate Incident/SLA Baseline |  | 2d | 2026-07-23 | 2026-07-24 | 36, 37 | Customer ITSM Process Owner; Customer Service Desk Manager | 16h |
| 39 | Sprint 3 Demo & Review ✓ | milestone | 0d | 2026-07-27 | 2026-07-27 | 32, 33, 34, 35, 36, 37, 38 |  |  |
| 40 | **SPRINT 4 — Change/CAB & Service Catalog** |  | 10d | 2026-07-28 | 2026-08-10 |  |  | 80h |
| 41 | Sprint 4 Planning |  | 1d | 2026-07-28 | 2026-07-28 | 39 | ECS Delivery Manager; ECS Lead Consultant (ITSM) | 8h |
| 42 | Change Management OOTB Configuration |  | 4d | 2026-07-28 | 2026-07-31 | 41 | ECS Lead Consultant (ITSM); Customer Change Manager | 32h |
| 43 | CAB Process Design & Configuration |  | 3d | 2026-07-29 | 2026-07-31 | 41, 42 | ECS Lead Consultant (ITSM); Customer Change Manager | 24h |
| 44 | ⚑ CUST: Define CAB Membership & Approval Matrix |  | 3d | 2026-07-28 | 2026-07-30 | 41 | Customer Change Manager; Customer ITSM Process Owner | 24h |
| 45 | Catalog Items — Priority Batch (Items 1-7) |  | 4d | 2026-08-04 | 2026-08-07 | 41 | ECS Catalog Specialist; Customer ITSM Process Owner | 32h |
| 46 | Catalog Approval Workflows Configuration |  | 3d | 2026-08-05 | 2026-08-07 | 45 | ECS Catalog Specialist; Customer ITSM Process Owner | 24h |
| 47 | ⚑ CUST: Catalog Item Content & Approver Input |  | 3d | 2026-08-04 | 2026-08-06 | 44, 45 | Customer ITSM Process Owner; Customer Service Desk Manager | 24h |
| 48 | Sprint 4 Demo & Review ✓ | milestone | 0d | 2026-08-10 | 2026-08-10 | 42, 43, 44, 45, 46, 47 |  |  |
| 49 | **SPRINT 5 — Employee Experience & Analytics** |  | 10d | 2026-08-11 | 2026-08-24 |  |  | 80h |
| 50 | Sprint 5 Planning |  | 1d | 2026-08-11 | 2026-08-11 | 48 | ECS Delivery Manager; ECS Lead Consultant (ITSM) | 8h |
| 51 | Employee Center Portal Configuration |  | 4d | 2026-08-11 | 2026-08-14 | 50 | ECS Employee Experience Consultant; Customer ITSM Process Owner | 32h |
| 52 | ⚑ CUST: EC Branding Assets & Content |  | 3d | 2026-08-11 | 2026-08-13 | 50 | Customer HR/Employee Experience; Customer ITSM Process Owner | 24h |
| 53 | Virtual Agent — Topic Design & NLU |  | 3d | 2026-08-13 | 2026-08-17 | 50, 51 | ECS Employee Experience Consultant; Customer ITSM Process Owner | 24h |
| 54 | Virtual Agent — Handoff & Escalation Config |  | 2d | 2026-08-14 | 2026-08-17 | 53 | ECS Employee Experience Consultant; Customer Service Desk Manager | 16h |
| 55 | Knowledge Management Configuration |  | 3d | 2026-08-18 | 2026-08-20 | 50 | ECS Lead Consultant (ITSM); Customer ITSM Process Owner | 24h |
| 56 | ⚑ CUST: Seed Knowledge Articles (Top 20) |  | 3d | 2026-08-18 | 2026-08-20 | 55 | Customer ITSM Process Owner; Customer Service Desk Manager | 24h |
| 57 | Platform Analytics — OOTB Dashboard Config |  | 4d | 2026-08-11 | 2026-08-14 | 50 | ECS Lead Consultant (ITSM); ECS Platform Architect | 32h |
| 58 | Predictive Intelligence Readiness Check |  | 2d | 2026-08-19 | 2026-08-20 | 57 | ECS Lead Consultant (ITSM); ECS Platform Architect | 16h |
| 59 | Sprint 5 Demo & Review ✓ | milestone | 0d | 2026-08-24 | 2026-08-24 | 51, 52, 53, 54, 55, 56, 57, 58 |  |  |

Notes:
- 36: 3 SLA tiers — P1/P2/P3 aligned to OOTB defaults
- 38: Process owner sign-off required before Sprint 4
- 44: Customer owns CAB structure — blocking for Change config
- 47: Customer provides approver groups, content for catalog items
- 52: Logo, banner, portal text — required for EC build
- 56: 20 seed articles required for VA/Knowledge demo
- 58: Validate ticket volume/data quality for PI training

| ID | Task | Type | Duration | Start | Finish | Predecessors | Resources | Work |
| --- | --- | --- | --- | --- | --- | --- | --- | --- |
| 60 | **SPRINT 6 — HAM, Remaining Catalog & Stabilization** |  | 10d | 2026-08-25 | 2026-09-07 |  |  | 80h |
| 61 | Sprint 6 Planning |  | 1d | 2026-08-25 | 2026-08-25 | 59 | ECS Delivery Manager; ECS Lead Consultant (ITSM) | 8h |
| 62 | HAM — Stockroom & Asset Class Config |  | 3d | 2026-08-25 | 2026-08-27 | 61 | ECS HAM Consultant; Customer IT Infrastructure Lead | 24h |
| 63 | HAM — Lifecycle States & IMAC Workflows |  | 3d | 2026-08-27 | 2026-08-31 | 62 | ECS HAM Consultant | 24h |
| 64 | ⚑ CUST: Asset Data Import & Stockroom Setup |  | 3d | 2026-08-25 | 2026-08-27 | 61 | Customer IT Infrastructure Lead; ECS HAM Consultant | 24h |
| 65 | Catalog Items — Final Batch (Items 8-15) |  | 4d | 2026-08-25 | 2026-08-28 | 61 | ECS Catalog Specialist; Customer ITSM Process Owner | 32h |
| 66 | ⚑ CUST: Remaining Catalog Item Content |  | 3d | 2026-08-26 | 2026-08-28 | 65 | Customer ITSM Process Owner; Customer Service Desk Manager | 24h |
| 67 | Predictive Intelligence Training Run |  | 2d | 2026-08-27 | 2026-08-28 | 58, 65 | ECS Lead Consultant (ITSM); ECS Platform Architect | 16h |
| 68 | Environment Stabilization & Regression Testing |  | 4d | 2026-09-01 | 2026-09-04 | 62, 63, 65 | ECS Lead Consultant (ITSM); ECS Platform Architect; ECS CMDB/Discovery Specialist | 32h |
| 69 | Integration End-to-End Validation |  | 2d | 2026-09-02 | 2026-09-03 | 68 | ECS Platform Architect; ECS CMDB/Discovery Specialist; Customer IT Infrastructure Lead | 16h |
| 70 | ⚑ CUST: UAT Sign-off |  | 2d | 2026-09-04 | 2026-09-07 | 68, 69 | Customer Sponsor / Executive; Customer ITSM Process Owner | 16h |
| 71 | Sprint 6 Demo & Review ✓ | milestone | 0d | 2026-09-07 | 2026-09-07 | 63, 64, 66, 67, 68, 69, 70 |  |  |
| 72 | **HYPERCARE — Go-Live & Stabilization** |  | 20d | 2026-09-08 | 2026-10-05 |  |  | 160h |
| 73 | Go-Live Cutover Planning & Runbook |  | 2d | 2026-09-08 | 2026-09-09 | 71 | ECS Delivery Manager; ECS Lead Consultant (ITSM); ECS Platform Architect | 16h |
| 74 | ⚑ CUST: Go-Live Approval Sign-off |  | 1d | 2026-09-09 | 2026-09-09 | 73 | Customer Sponsor / Executive | 8h |
| 75 | Production Go-Live 🚀 | milestone | 0d | 2026-09-10 | 2026-09-10 | 73, 74 |  |  |
| 76 | Hypercare Week 1 — Active Monitoring |  | 5d | 2026-09-08 | 2026-09-14 | 73 | ECS Delivery Manager; ECS Lead Consultant (ITSM); ECS Platform Architect | 40h |
| 77 | Hypercare Week 2 — Issue Resolution |  | 5d | 2026-09-15 | 2026-09-21 | 76 | ECS Delivery Manager; ECS Lead Consultant (ITSM) | 40h |
| 78 | Hypercare Week 3 — Optimization |  | 5d | 2026-09-22 | 2026-09-28 | 77 | ECS Delivery Manager; ECS Lead Consultant (ITSM) | 40h |
| 79 | Hypercare Week 4 — Handover & Transition |  | 5d | 2026-09-29 | 2026-10-05 | 78 | ECS Delivery Manager; ECS Lead Consultant (ITSM); Customer Sponsor / Executive | 40h |
| 80 | Admin Training Delivery |  | 3d | 2026-09-22 | 2026-09-24 | 75 | ECS Lead Consultant (ITSM); Customer ITSM Process Owner; Customer IT Infrastructure Lead | 24h |
| 81 | ⚑ CUST: Admin Training Attendance |  | 3d | 2026-09-22 | 2026-09-24 | 80 | Customer ITSM Process Owner; Customer IT Infrastructure Lead; Customer Service Desk Manager | 24h |
| 82 | Knowledge Transfer & Documentation Review |  | 2d | 2026-09-30 | 2026-10-01 | 79, 80 | ECS Delivery Manager; ECS Lead Consultant (ITSM) | 16h |
| 83 | Engagement Closure & Sign-off ✓ | milestone | 0d | 2026-10-05 | 2026-10-05 | 79, 80, 81, 82 |  |  |

Notes:
- 64: Customer provides asset inventory data for HAM import
- 67: Requires sufficient ticket data — minimum 1000 records
- 70: Executive sponsor sign-off required for go-live approval
- 74: Executive approval required to proceed to production
